# Information System Schedule, MW-PPPC-546386-GO-RFB

Schedule from MS Project, 2027-01-04 to 2027-08-13.

## Calendars

- Standard: Mon-Fri 08:00-12:00, 13:00-17:00; Sat-Sun off.

## Schedule

| ID | WBS | Task | Type | Duration | Start | Finish | Predecessors | Total slack | Free slack |
| --- | --- | --- | --- | --- | --- | --- | --- | --- | --- |
| 1 | 1 | Effective Date | milestone | 0w | 2027-01-04 | 2027-01-04 |  | 0d |  |
| 2 | 2 | **1 Project mobilization and planning** |  | 2w | 2027-01-04 | 2027-01-15 |  | 0d |  |
| 3 | 2.1 | Mobilize the Information System team |  | 1w | 2027-01-04 | 2027-01-08 | 1 | 20d | 0d |
| 4 | 2.2 | Confirm Purchaser inputs and baseline the schedule |  | 2w | 2027-01-04 | 2027-01-15 | 1 | 150d | 0d |
| 5 | 2.3 | Discovery: NRIS documentation, current process and site walkthroughs |  | 2w | 2027-01-04 | 2027-01-15 | 1 | 0d |  |
| 6 | 2.4 | Order long-lead equipment and ICT infrastructure |  | 1w | 2027-01-11 | 2027-01-15 | 3 | 20d | 0d |
| 7 | 2.5 | Recommended trainee numbers and prerequisites issued to NRB | milestone | 0w | 2027-01-15 | 2027-01-15 | 4 | 150d |  |
| 8 | 3 | **2 Design and detailed planning** |  | 4w | 2027-01-18 | 2027-02-12 |  | 0d |  |
| 9 | 3.1 | Discovery: NRIS test data profiling and Discovery Report |  | 2w | 2027-01-18 | 2027-01-29 | 5, 92, 93 | 5d |  |
| 10 | 3.2 | ICT Site Preparation Guide |  | 2w | 2027-01-18 | 2027-01-29 | 5 | 5d | 0d |
| 11 | 3.3 | ICT Site Preparation Guide issued to the facility works | milestone | 0w | 2027-01-29 | 2027-01-29 | 10 | 20d | 10d |
| 12 | 3.4 | Network requirements for the Government Wide Area Network |  | 1w | 2027-01-25 | 2027-01-29 | 10SS+1w | 5d |  |
| 13 | 3.5 | High-Level Design |  | 2w | 2027-01-18 | 2027-01-29 | 5 | 0d |  |
| 14 | 3.6 | Low-Level Design |  | 2w | 2027-01-25 | 2027-02-05 | 13SS+1w | 0d |  |
| 15 | 3.7 | Interface Control Documents, agreed with NRB developers |  | 3w | 2027-01-18 | 2027-02-05 | 5 | 0d |  |
| 16 | 3.8 | Security Design Documentation and certificate profile with e-Government |  | 3w | 2027-01-18 | 2027-02-05 | 5 | 0d |  |
| 17 | 3.9 | Card layout and card identifier, joint redesign with NRB |  | 3w | 2027-01-18 | 2027-02-05 | 5 | 0d |  |
| 18 | 3.10 | Future-state processes and draft Standard Operating Procedures |  | 3w | 2027-01-18 | 2027-02-05 | 5 | 0d |  |
| 19 | 3.11 | Design submitted for approval | milestone | 0w | 2027-02-05 | 2027-02-05 | 9, 12, 14, 15, 16, 17, 18 | 0d |  |
| 20 | 3.12 | Design review with NRB |  | 1w | 2027-02-08 | 2027-02-12 | 19 | 0d |  |
| 21 | 3.13 | Detailed Design Approval | milestone | 0w | 2027-02-12 | 2027-02-12 | 20 | 0d |  |
| 22 | 4 | **3 Procurement and manufacturing** |  | 16w | 2027-01-18 | 2027-05-07 |  | 10d |  |
| 23 | 4.1 | Equipment manufacture, started on order: two personalization and two mailing systems |  | 10w | 2027-01-18 | 2027-03-26 | 6 | 20d | 0d |
| 24 | 4.2 | Options fixed at design approval fitted to the equipment |  | 2w | 2027-03-15 | 2027-03-26 | 21FS+4w, 23SS+8w | 20d | 0d |
| 25 | 4.3 | Equipment ready for factory acceptance | milestone | 0w | 2027-03-26 | 2027-03-26 | 23, 24 | 20d |  |
| 26 | 4.4 | Blank cards, first production run: qualification and factory acceptance stock |  | 7w | 2027-02-15 | 2027-04-02 | 21, 94 | 10d | 0d |
| 27 | 4.5 | Qualification cards delivered to the equipment factory | milestone | 0w | 2027-04-09 | 2027-04-09 | 26FS+1w | 10d |  |
| 28 | 4.6 | Factory acceptance test procedure issued to NRB for approval | milestone | 0w | 2027-04-09 | 2027-04-09 | 21FS+8w | 10d |  |
| 29 | 4.7 | Blank cards, first delivery of not less than 500,000 |  | 5w | 2027-04-05 | 2027-05-07 | 26 | 25d | 0d |
| 30 | 4.8 | ICT infrastructure manufacture and delivery, ordered at mobilization |  | 11w | 2027-01-18 | 2027-04-02 | 6 | 30d | 5d |
| 31 | 4.9 | Application build: components defined by the Technical Requirements, from design start |  | 12w | 2027-01-18 | 2027-04-09 | 5 | 10d |  |
| 32 | 4.10 | Application build: NRIS-facing and signing components, after design approval |  | 10w | 2027-02-15 | 2027-04-23 | 21, 95, 96 | 25d | 0d |
| 33 | 4.11 | NRIS interface simulators from the Interface Control Documents |  | 2w | 2027-02-15 | 2027-02-26 | 21 | 30d | 0d |
| 34 | 4.12 | Production side of the NRIS interface, tested against simulators |  | 8w | 2027-03-01 | 2027-04-23 | 33 | 30d | 5d |
| 35 | 4.13 | Clearing agent appointed | milestone | 0w | 2027-03-26 | 2027-03-26 | 21FS+6w | 15d | 0d |
| 36 | 4.14 | Customs documentation prepared |  | 4w | 2027-03-29 | 2027-04-23 | 35 | 15d |  |

Notes:
- 21: Contractual milestone in the Implementation Schedule

| ID | WBS | Task | Type | Duration | Start | Finish | Predecessors | Total slack | Free slack |
| --- | --- | --- | --- | --- | --- | --- | --- | --- | --- |
| 37 | 5 | **4 Facility renovation (facility works)** |  | 12w | 2027-02-15 | 2027-05-07 |  | 10d |  |
| 38 | 5.1 | Facility renovation, under the facility works, server room first |  | 12w | 2027-02-15 | 2027-05-07 | 11, 21 | 10d | 0d |
| 39 | 5.2 | Server room handed over: sealed, powered through its UPS, cooled and cabled | milestone | 0w | 2027-04-09 | 2027-04-09 | 38SS+8w, 99 | 25d | 0d |
| 40 | 5.3 | Readiness inspection of the production floor |  | 1w | 2027-05-03 | 2027-05-07 | 38SS+11w | 10d | 0d |
| 41 | 5.4 | Production floor ready for installation | milestone | 0w | 2027-05-07 | 2027-05-07 | 38, 40 | 10d |  |
| 42 | 6 | **5 Factory acceptance testing** |  | 1w | 2027-04-26 | 2027-04-30 |  | 0d |  |
| 43 | 6.1 | Factory acceptance of the equipment on production card stock, NRB delegation present |  | 1w | 2027-04-26 | 2027-04-30 | 25, 26, 27, 28, 98, 1FS+16w | 0d |  |
| 44 | 6.2 | Printer Control Service proven against the equipment software |  | 1w | 2027-04-26 | 2027-04-30 | 25, 31, 1FS+16w | 0d |  |
| 45 | 6.3 | NRB technical staff trained at the factory |  | 1w | 2027-04-26 | 2027-04-30 | 25, 1FS+16w | 0d |  |
| 46 | 6.4 | Successful FAT | milestone | 0w | 2027-04-30 | 2027-04-30 | 43, 44, 45 | 0d |  |
| 47 | 7 | **6 Shipping and customs clearance** |  | 3w | 2027-05-03 | 2027-05-21 |  | 0d |  |
| 48 | 7.1 | Shipping of the personalization and mailing equipment |  | 2w | 2027-05-03 | 2027-05-14 | 46 | 0d |  |
| 49 | 7.2 | Customs clearance and delivery to NRB |  | 1w | 2027-05-17 | 2027-05-21 | 48, 36, 104 | 0d |  |
| 50 | 7.3 | Equipment delivered on site | milestone | 0w | 2027-05-21 | 2027-05-21 | 49 | 0d |  |
| 51 | 7.4 | First card delivery shipped, cleared and delivered to NRB |  | 2w | 2027-05-10 | 2027-05-21 | 29, 104 | 25d | 0d |
| 52 | 7.5 | First card delivery on site | milestone | 0w | 2027-05-21 | 2027-05-21 | 51 | 25d |  |
| 53 | 8 | **7 Installation and site acceptance testing** |  | 12w | 2027-04-12 | 2027-07-02 |  | 25d |  |
| 54 | 8.1 | ICT infrastructure delivered to site, inspected and racked |  | 1w | 2027-04-12 | 2027-04-16 | 30, 39 | 25d | 0d |
| 55 | 8.2 | NRB technical staff shadow installation and commissioning |  | 12w | 2027-04-12 | 2027-07-02 | 54SS, 100 | 30d |  |
| 56 | 8.3 | Platform build: cluster, pooled storage, database, security, non-production environments |  | 1w | 2027-04-19 | 2027-04-23 | 54 | 25d | 0d |
| 57 | 8.4 | Hardware security modules installed, key ceremony, certificate signing request to e-Government |  | 1w | 2027-04-19 | 2027-04-23 | 54 | 30d | 0d |
| 58 | 8.5 | Secondary environment deployed at Blantyre and replication established |  | 3w | 2027-04-19 | 2027-05-07 | 54, 101, 102 | 25d | 0d |
| 59 | 8.6 | Application deployed and integrated with Active Directory |  | 1w | 2027-04-26 | 2027-04-30 | 56, 31, 32, 103 | 25d | 0d |
| 60 | 8.7 | Pre-Commissioning Test Program submitted to NRB for approval | milestone | 0w | 2027-04-30 | 2027-04-30 | 54FS+2w | 30d | 5d |
| 61 | 8.8 | Early integration with NRIS: interfaces tested as NRB delivers them |  | 5w | 2027-05-03 | 2027-06-04 | 59, 34, 105 | 50d |  |
| 62 | 8.9 | Integration with NRIS completed against NRB's delivered side |  | 2w | 2027-06-07 | 2027-06-18 | 108, 59, 34, 105 | 0d |  |
| 63 | 8.10 | Pre-commissioning tests of the ICT estate, Table A 4, 5, 8 and 13 |  | 2w | 2027-05-10 | 2027-05-21 | 59, 58, 60 | 25d | 0d |
| 64 | 8.11 | Performance testing of the software, and security testing |  | 2w | 2027-05-17 | 2027-05-28 | 59, 63SS+1w | 25d |  |
| 65 | 8.12 | Equipment inspected on delivery, unpacked and placed |  | 1w | 2027-05-24 | 2027-05-28 | 50, 41 | 55d |  |
| 66 | 8.13 | Equipment installed and commissioned by the manufacturer's engineers |  | 3w | 2027-05-24 | 2027-06-11 | 50, 41 | 0d |  |
| 67 | 8.14 | Critical Spare Parts List submitted to NRB for approval | milestone | 0w | 2027-06-18 | 2027-06-18 | 50FS+4w | 40d |  |
| 68 | 8.15 | User acceptance testing with NRIS stakeholders |  | 2w | 2027-06-14 | 2027-06-25 | 59, 62SS+1w | 0d |  |
| 69 | 8.16 | Independent penetration testing of the full deployed configuration |  | 1w | 2027-06-14 | 2027-06-18 | 66, 59 | 10d |  |
| 70 | 8.17 | Pre-commissioning tests of the equipment and integration, Table A 1, 6, 7, 9 to 12, 14 and 16 |  | 3w | 2027-06-14 | 2027-07-02 | 66, 60, 62FF+2w | 0d |  |
| 71 | 8.18 | Pilot production of 500 to 1,000 test cards, not issued to citizens |  | 1w | 2027-06-28 | 2027-07-02 | 66, 68, 62, 110, 52 | 0d |  |
| 72 | 8.19 | Installation and SAT complete | milestone | 0w | 2027-07-02 | 2027-07-02 | 63, 70, 64, 69, 71, 58 | 0d |  |

Notes:
- 46: Contractual milestone in the Implementation Schedule
- 50: Contractual milestone in the Implementation Schedule
- 72: Contractual milestone in the Implementation Schedule

| ID | WBS | Task | Type | Duration | Start | Finish | Predecessors | Total slack | Free slack |
| --- | --- | --- | --- | --- | --- | --- | --- | --- | --- |
| 73 | 9 | **8 Training and knowledge transfer** |  | 4w | 2027-06-21 | 2027-07-16 |  | 0d |  |
| 74 | 9.1 | User training, groups one and two, one for each shift |  | 2w | 2027-06-21 | 2027-07-02 | 66FS+1w, 106, 1FS+24w | 0d |  |
| 75 | 9.2 | Technical training, NRB technical trainers co-delivering |  | 2w | 2027-06-28 | 2027-07-09 | 74SS+1w | 0d |  |
| 76 | 9.3 | Management training |  | 1w | 2027-06-28 | 2027-07-02 | 74SS+1w | 30d | 10d |
| 77 | 9.4 | User training, cover group, delivered by NRB trainers under observation |  | 2w | 2027-07-05 | 2027-07-16 | 74 | 20d | 0d |
| 78 | 9.5 | Training completed | milestone | 0w | 2027-07-16 | 2027-07-16 | 74, 75, 76, 77 | 20d |  |
| 79 | 10 | **9 System commissioning and performance testing** |  | 4w | 2027-07-05 | 2027-07-30 |  | 0d |  |
| 80 | 10.1 | Operational acceptance tests 1 to 12, 14 and 15 |  | 1w | 2027-07-05 | 2027-07-09 | 72 | 5d |  |
| 81 | 10.2 | Sustained production stability and multi-shift operation, tests 2 and 13 |  | 2w | 2027-07-05 | 2027-07-16 | 72 | 0d |  |
| 82 | 10.3 | Operational independence, test 16 |  | 1w | 2027-07-12 | 2027-07-16 | 74, 75 | 0d |  |
| 83 | 10.4 | Final acceptance demonstration, test 17, ten working day observation |  | 2w | 2027-07-19 | 2027-07-30 | 80, 81, 82, 97 | 0d |  |
| 84 | 10.5 | System commissioned | milestone | 0w | 2027-07-30 | 2027-07-30 | 83 | 0d |  |
| 85 | 10.6 | Warranty and support documentation delivered | milestone | 0w | 2027-07-30 | 2027-07-30 | 83 | 10d |  |
| 86 | 11 | **10 Handover, go-live and closure** |  | 2w | 2027-08-02 | 2027-08-13 |  | 0d |  |
| 87 | 11.1 | As-built documentation, prepared progressively from week 27, finalized |  | 2w | 2027-08-02 | 2027-08-13 | 84 | 0d |  |
| 88 | 11.2 | Transfer of Security Operations Center operation to NRB |  | 2w | 2027-08-02 | 2027-08-13 | 84 | 0d |  |
| 89 | 11.3 | Stabilization: resident engineers on every shift, daily review with NRB |  | 2w | 2027-08-02 | 2027-08-13 | 84, 111 | 0d |  |
| 90 | 11.4 | Full handover and go-live | milestone | 0w | 2027-08-13 | 2027-08-13 | 87, 88, 89 | 0d |  |
| 91 | 12 | **Dependencies on the Purchaser and other parties** |  | 24w | 2027-01-08 | 2027-06-25 |  | 10d |  |
| 92 | 12.1 | NRIS documentation received (NRB) | milestone | 0w | 2027-01-08 | 2027-01-08 | 1FS+1w | 10d | 5d |
| 93 | 12.2 | Access to the NRIS test environment for profiling (NRB) | milestone | 0w | 2027-01-15 | 2027-01-15 | 1FS+2w | 5d | 0d |
| 94 | 12.3 | Card design decisions (NRB) | milestone | 0w | 2027-02-05 | 2027-02-05 | 1FS+5w | 15d | 5d |
| 95 | 12.4 | QR code specification (NRB) | milestone | 0w | 2027-02-05 | 2027-02-05 | 1FS+5w | 30d | 5d |
| 96 | 12.5 | Certificate profile and signing request procedure (e-Government) | milestone | 0w | 2027-02-05 | 2027-02-05 | 1FS+5w | 30d | 5d |
| 97 | 12.6 | Observation period for the final acceptance demonstration agreed (NRB) | milestone | 0w | 2027-02-05 | 2027-02-05 | 1FS+5w | 115d |  |
| 98 | 12.7 | Factory acceptance delegation nominated (NRB) | milestone | 0w | 2027-03-19 | 2027-03-19 | 1FS+11w | 25d |  |
| 99 | 12.8 | Dedicated electrical connection to the facility live (NRB) | milestone | 0w | 2027-03-26 | 2027-03-26 | 1FS+12w | 35d | 10d |
| 100 | 12.9 | Technical trainees nominated (NRB) | milestone | 0w | 2027-04-09 | 2027-04-09 | 1FS+14w | 30d | 0d |
| 101 | 12.10 | Government Wide Area Network provisioned (NRB, e-Government) | milestone | 0w | 2027-04-16 | 2027-04-16 | 1FS+15w | 25d | 0d |
| 102 | 12.11 | Access and rack space at the Blantyre data center (NRB) | milestone | 0w | 2027-04-16 | 2027-04-16 | 1FS+15w | 25d | 0d |
| 103 | 12.12 | Active Directory details and service accounts (NRB) | milestone | 0w | 2027-04-23 | 2027-04-23 | 1FS+16w | 25d | 0d |
| 104 | 12.13 | Purchaser documents for customs clearance (NRB) | milestone | 0w | 2027-04-23 | 2027-04-23 | 1FS+16w | 15d | 10d |
| 105 | 12.14 | Connectivity from the facility to the NRIS test environment (NRB) | milestone | 0w | 2027-04-30 | 2027-04-30 | 1FS+17w | 25d | 0d |
| 106 | 12.15 | User trainees nominated (NRB) | milestone | 0w | 2027-05-14 | 2027-05-14 | 1FS+19w | 25d |  |
| 107 | 12.16 | NRIS side of the interface (NRB developers) |  | 16w | 2027-02-15 | 2027-06-04 | 21, 15 | 0d |  |
| 108 | 12.17 | NRIS side of the interface ready for integration (NRB) | milestone | 0w | 2027-06-04 | 2027-06-04 | 107 | 0d |  |
| 109 | 12.18 | Document Signer certificate issue (e-Government) |  | 3w | 2027-04-26 | 2027-05-14 | 57 | 30d | 0d |
| 110 | 12.19 | Document Signer certificate issued (e-Government) | milestone | 0w | 2027-05-14 | 2027-05-14 | 109 | 30d |  |
| 111 | 12.20 | Remote support access arranged (NRB, e-Government) | milestone | 0w | 2027-06-25 | 2027-06-25 | 1FS+25w | 25d |  |

Notes:
- 78: Contractual milestone in the Implementation Schedule
- 84: Contractual milestone in the Implementation Schedule
- 90: Contractual milestone in the Implementation Schedule
